# Virtualni popotnik

Schedule from MS Project, 2015-03-16 to 2015-04-06, costs in €.

## Calendars

- Standard: Mon-Fri 08:00-12:00, 13:00-17:00; Sat-Sun off.

## Resources

| Resource | Rate |
| --- | --- |
| Vodja projekta | 12 |
| Tajnica | 5.5 |
| Vzdrževalec | 7 |
| Vodja delovne skupine - mobilna a. | 10 |
| Vodja delovne skupine - spletna a. | 10 |
| Vodja delovne skupine - intelegentni s. | 10 |
| Vodja delovne skupine - BZP | 10 |
| Načrtovalec 1 | 8.5 |
| Načrtovalec 2 | 8.5 |
| Načrtovalec sistema | 8.5 |
| Načrtovalec 3 | 8.5 |
| Grafični oblikovalec 1 | 9 |
| Grafični oblikovalec 2 | 9 |
| Grafični oblikovalec 3 | 9 |
| Programer 1 | 8 |
| Programer 2 | 8 |
| Programer 3 | 8 |
| Programer 4 | 8 |
| Programer 5 | 8 |
| Programer 6 | 8 |
| Programer 7 | 8 |
| Programer 8 | 8 |
| Programer 9 | 8 |
| Programer 10 | 8 |
| Tester 1 | 7.5 |
| Tester 2 | 7.5 |
| Tester 3 | 7.5 |
| Tester 4 | 7.5 |
| Tester 5 | 7.5 |
| Tester 6 | 7.5 |
| Oblikovalec podatkovne baze | 9 |
| Mehatronik 1 | 8 |
| Mehatronik 2 | 8 |
| Elektronik 1 | 9.2 |
| Elektronik 2 | 9.2 |
| Daljinski upravljalnik | 300 |
| Paket senzorjev | 150 |
| 360° kamera | 300 |
| Delovna postaja | 1200 |
| Strežnik | 1800 |
| Brezpilotno zračno plovilo | 1500 |
| Pisarniški material | 200 |
| Tehnični material | 50 |
| Zakuska | 200 |
| Pravnik | 9 |

## Schedule

| ID | WBS | Task | Duration | Start | Finish | Predecessors | Total slack | Resources | Work | Cost |
| --- | --- | --- | --- | --- | --- | --- | --- | --- | --- | --- |
| 1 | 1 | Začetni sestanek s stranko | 4h | 2015-03-16 | 2015-03-16 |  | 0d | Vodja projekta; Tajnica | 8h | 54 |
| 2 | 2 | Interni sestanek | 3h | 2015-03-16 | 2015-03-16 | 1 | 0d | Tajnica; Vodja delovne skupine - mobilna a.; Vodja delovne skupine - spletna a.; Vodja delovne skupine - intelegentni s.; Vodja delovne skupine - BZP; Vodja projekta | 18h | 136.5 |
| 3 | 3 | Priprava pogodbe | 5h | 2015-03-16 | 2015-03-17 | 2 | 0d | Pravnik; Vodja projekta | 10h | 105 |
| 4 | 4 | Podpis pogodbe | 2h | 2015-03-17 | 2015-03-17 | 3 | 0d | Pravnik; Vodja projekta | 4h | 34 |
| 5 | 5 | **Priprava zahtev** | 6.75d | 2015-03-17 | 2015-03-26 | 4 | 0d |  | 442h | 4,108 |
| 6 | 5.1 | Zajem zahtev | 12h | 2015-03-17 | 2015-03-19 |  | 0d | Načrtovalec 1; Načrtovalec 2; Načrtovalec 3; Načrtovalec sistema; Vodja delovne skupine - mobilna a.; Vodja delovne skupine - spletna a.; Vodja delovne skupine - intelegentni s.; Vodja delovne skupine - BZP | 96h | 888 |
| 7 | 5.2 | Analiza zahtev | 1d | 2015-03-19 | 2015-03-20 | 6 | 0d | Načrtovalec 1; Načrtovalec 2; Načrtovalec 3; Načrtovalec sistema; Vodja projekta; Vodja delovne skupine - mobilna a.; Vodja delovne skupine - spletna a.; Vodja delovne skupine - intelegentni s.; Vodja delovne skupine - BZP | 72h | 688 |
| 8 | 5.3 | Izdelava specifikacij | 3d | 2015-03-20 | 2015-03-25 | 7 | 0d | Načrtovalec 1; Načrtovalec 2; Načrtovalec 3; Načrtovalec sistema; Vodja delovne skupine - mobilna a.; Vodja delovne skupine - spletna a.; Vodja delovne skupine - intelegentni s.; Vodja delovne skupine - BZP; Vodja projekta | 216h | 2,064 |
| 9 | 5.4 | Sestanek s stranko, usklajevanje specifikacij | 1d | 2015-03-25 | 2015-03-26 | 8 | 0d | Tajnica; Vodja delovne skupine - mobilna a.; Vodja delovne skupine - spletna a.; Vodja delovne skupine - intelegentni s.; Vodja delovne skupine - BZP; Vodja projekta | 48h | 364 |
| 10 | 5.5 | Potrditev zahtev | 2h | 2015-03-26 | 2015-03-26 | 9 | 0d | Vodja delovne skupine - mobilna a.; Vodja delovne skupine - spletna a.; Vodja delovne skupine - intelegentni s.; Vodja delovne skupine - BZP; Vodja projekta | 10h | 104 |
| 11 | 6 | **Analiza nabavnega materiala** | 6.75d | 2015-03-26 | 2015-04-06 | 5 | 0d |  | 34h | 7,035.5 |
| 12 | 6.1 | Pridobivanje ponudb za senzorje in kamere | 4d | 2015-03-26 | 2015-04-01 |  | 0d | Vodja delovne skupine - BZP | 32h | 320 |
| 13 | 6.2 | Nabava testnega materiala | 1h | 2015-04-01 | 2015-04-01 | 12 | 0d | Vodja delovne skupine - BZP; 360° kamera [400%]; Brezpilotno zračno plovilo [300%]; Daljinski upravljalnik [300%]; Tehnični material [200%] | 1h | 6,710 |
| 14 | 6.3 | Prevzem materiala | 1h | 2015-04-01 | 2015-04-01 | 13 | 0d | Tajnica | 1h | 5.5 |
| 15 | 6.4 | Preizkušanje testnega materiala | 2d | 2015-04-01 | 2015-04-03 | 14 | 0d |  |  |  |
| 16 | 6.5 | Dokumentiranje preizkušanja testnega materiala | 3h | 2015-04-03 | 2015-04-06 | 15 | 0d |  |  |  |
| 17 | 6.6 | Nabava materiala | 1h | 2015-04-06 | 2015-04-06 | 16 | 0d |  |  |  |
| 18 | 7 | **Priprava delovnega okolja** | 1d? | 2015-03-26 | 2015-03-27 | 5 | 0d |  |  |  |
| 19 | 7.1 | Namestitev strežnika | 1d? | 2015-03-26 | 2015-03-27 |  | 0d |  |  |  |
| 20 | 7.2 | Konfiguracija strežnika | 1d? | 2015-03-26 | 2015-03-27 |  | 0d |  |  |  |
| 21 | 7.3 | Vzpostavitev RAID 6 diskovnega polja | 1d? | 2015-03-26 | 2015-03-27 |  | 0d |  |  |  |
| 22 | 7.4 | Priprava "delavnice" za brezpilotna zračna plovila | 1d? | 2015-03-26 | 2015-03-27 |  | 0d |  |  |  |
| 23 | 7.5 | Namestitev delovnih postaj | 1d? | 2015-03-26 | 2015-03-27 |  | 0d |  |  |  |
| 24 | 7.6 | Priprava poročila o pripravi delovnega okolja | 1d? | 2015-03-26 | 2015-03-27 |  | 0d |  |  |  |

| ID | WBS | Task | Duration | Start | Finish | Predecessors | Total slack | Constraint |
| --- | --- | --- | --- | --- | --- | --- | --- | --- |
| 25 | 8 | **Vzpostavitev redudančnega delovnega okolja** | 1d? | 2015-03-26 | 2015-03-27 | 5 | 0d |  |
| 26 | 8.1 | Analiza zahtev redundančnega delovnega okolja | 1d? | 2015-03-26 | 2015-03-27 |  | 0d |  |
| 27 | 8.2 | Implementacija redundančnega delovnega okolja | 1d? | 2015-03-26 | 2015-03-27 |  | 0d |  |
| 28 | 8.3 | Priprava poročila | 1d? | 2015-03-26 | 2015-03-27 |  | 0d |  |
| 29 | 9 | **Vzpostavitev podatkovne baze** | 1d? | 2015-03-27 | 2015-03-30 | 25, 18 | 0d |  |
| 30 | 9.1 | Analiza zahtev | 1d? | 2015-03-27 | 2015-03-30 |  | 0d |  |
| 31 | 9.2 | Izdelava ER diagrama | 1d? | 2015-03-27 | 2015-03-30 |  | 0d |  |
| 32 | 9.3 | Modeliranje podatkovne baze | 1d? | 2015-03-27 | 2015-03-30 |  | 0d |  |
| 33 | 9.4 | Vzpostavitev podatkovnega strežnika | 1d? | 2015-03-27 | 2015-03-30 |  | 0d |  |
| 34 | 9.5 | Implementacija podatkovne baze | 1d? | 2015-03-27 | 2015-03-30 |  | 0d |  |
| 35 | 9.6 | Priprava politike arhiviranja in obnovitve podatkovne baze | 1d? | 2015-03-27 | 2015-03-30 |  | 0d |  |
| 36 | 9.7 | Priprava poročila | 1d? | 2015-03-27 | 2015-03-30 |  | 0d |  |
| 37 | 10 | **Razvoj** | 1d? | 2015-03-30 | 2015-03-31 | 29 | 0d |  |
| 38 | 10.1 | **Sestanek delovne skupine** | 0.25d | 2015-03-30 | 2015-03-30 |  | 0.75d |  |
| 39 | 10.1.1 | Sestanek delovne skupine | 2h | 2015-03-30 | 2015-03-30 |  | 0.75d | start no earlier than 2015-03-16 |
| 40 | 10.2 | **Inteligentni sistem** | 1d? | 2015-03-30 | 2015-03-31 |  | 0d |  |
| 41 | 10.2.1 | Načrtovanje inteligentnega sistema | 1d? | 2015-03-30 | 2015-03-31 |  | 0d |  |
| 42 | 10.2.2 | Implementacija podatkovne baze | 1d? | 2015-03-30 | 2015-03-31 |  | 0d |  |
| 43 | 10.2.3 | Razvoj storitev za dostop in vnos podatkov | 1d? | 2015-03-30 | 2015-03-31 |  | 0d |  |
| 44 | 10.2.4 | Implementacija storitev za zajem podatkov (vreme) | 1d? | 2015-03-30 | 2015-03-31 |  | 0d |  |
| 45 | 10.2.5 | Razvoj mehanizmov za varovanje podatkov | 1d? | 2015-03-30 | 2015-03-31 |  | 0d |  |
| 46 | 10.2.6 | Razvoj nadzora brezpilotnih zračnih plovil | 1d? | 2015-03-30 | 2015-03-31 |  | 0d |  |
| 47 | 10.2.7 | Priprava dokumentacije | 1d? | 2015-03-30 | 2015-03-31 |  | 0d |  |
| 48 | 10.2.8 | Predstavitev rezultatov iteracije naročniku | 1d? | 2015-03-30 | 2015-03-31 |  | 0d |  |
| 49 | 10.2.9 | Ponovna iteracija implementacije | 1d? | 2015-03-30 | 2015-03-31 |  | 0d |  |

| ID | WBS | Task | Duration | Start | Finish | Total slack |
| --- | --- | --- | --- | --- | --- | --- |
| 50 | 10.3 | **Modifikacija brezpilotna zračna plovila** | 1d? | 2015-03-30 | 2015-03-31 | 0d |
| 51 | 10.3.1 | Načrtovanje modifikacije brezpilotnega zračnega plovila | 1d? | 2015-03-30 | 2015-03-31 | 0d |
| 52 | 10.3.2 | Priprava senzorjev in kamere | 1d? | 2015-03-30 | 2015-03-31 | 0d |
| 53 | 10.3.3 | Povezava senzorjev in kamere z inteligentnim sistemom | 1d? | 2015-03-30 | 2015-03-31 | 0d |
| 54 | 10.3.4 | Implementacija modifikacij | 1d? | 2015-03-30 | 2015-03-31 | 0d |
| 55 | 10.3.5 | Razvoj samodejnega upravljanja letenja | 1d? | 2015-03-30 | 2015-03-31 | 0d |
| 56 | 10.3.6 | Priprava dokumentacije | 1d? | 2015-03-30 | 2015-03-31 | 0d |
| 57 | 10.3.7 | Predstavitev rezultatov iteracije naročniku | 1d? | 2015-03-30 | 2015-03-31 | 0d |
| 58 | 10.3.8 | Ponovna iteracija implementacije | 1d? | 2015-03-30 | 2015-03-31 | 0d |
| 59 | 10.4 | **Spletna aplikacija** | 1d? | 2015-03-30 | 2015-03-31 | 0d |
| 60 | 10.4.1 | Načrtovanje spletne aplikacije | 1d? | 2015-03-30 | 2015-03-31 | 0d |
| 61 | 10.4.2 | Izdelava grafične predloge | 1d? | 2015-03-30 | 2015-03-31 | 0d |
| 62 | 10.4.3 | Implementacije grafičnega vmesnika | 1d? | 2015-03-30 | 2015-03-31 | 0d |
| 63 | 10.4.4 | Implementacija sprehoda v virtualni realnosti | 1d? | 2015-03-30 | 2015-03-31 | 0d |
| 64 | 10.4.5 | Implementacija sprehoda v načinu 360° panorame | 1d? | 2015-03-30 | 2015-03-31 | 0d |
| 65 | 10.4.6 | Priprava dokumentacije | 1d? | 2015-03-30 | 2015-03-31 | 0d |
| 66 | 10.4.7 | Predstavitev rezultatov iteracije naročniku | 1d? | 2015-03-30 | 2015-03-31 | 0d |
| 67 | 10.4.8 | Ponovna iteracija implementacije | 1d? | 2015-03-30 | 2015-03-31 | 0d |
| 68 | 10.5 | **Mobilna aplikacija** | 1d? | 2015-03-30 | 2015-03-31 | 0d |
| 69 | 10.5.1 | Načrtovanje mobilne aplikacije | 1d? | 2015-03-30 | 2015-03-31 | 0d |
| 70 | 10.5.2 | Izdelava grafičnega vmesnika | 1d? | 2015-03-30 | 2015-03-31 | 0d |
| 71 | 10.5.3 | Modeliranje podatkovne baze | 1d? | 2015-03-30 | 2015-03-31 | 0d |
| 72 | 10.5.4 | Vzpostavitev lokalne podatkovne baze | 1d? | 2015-03-30 | 2015-03-31 | 0d |
| 73 | 10.5.5 | Implementacija grafične vmesnika | 1d? | 2015-03-30 | 2015-03-31 | 0d |
| 74 | 10.5.6 | Implementacija sprehoda v načinu 360° panorame | 1d? | 2015-03-30 | 2015-03-31 | 0d |
| 75 | 10.5.7 | Implementacija sprehoda v virtualni realnosti | 1d? | 2015-03-30 | 2015-03-31 | 0d |
| 76 | 10.5.8 | Implementacija vnosa podatkov | 1d? | 2015-03-30 | 2015-03-31 | 0d |
| 77 | 10.5.9 | Priprava dokumentacije | 1d? | 2015-03-30 | 2015-03-31 | 0d |
| 78 | 10.5.10 | Predstavitev rezultatov iteracije naročniku | 1d? | 2015-03-30 | 2015-03-31 | 0d |
| 79 | 10.5.11 | Ponovna iteracija implementacije | 1d? | 2015-03-30 | 2015-03-31 | 0d |

| ID | WBS | Task | Duration | Start | Finish | Predecessors | Total slack |
| --- | --- | --- | --- | --- | --- | --- | --- |
| 80 | 11 | **Testiranje** | 1d? | 2015-03-30 | 2015-03-31 | 29 | 0d |
| 81 | 11.1 | **Spletna aplikacija** | 1d? | 2015-03-30 | 2015-03-31 |  | 0d |
| 82 | 11.1.1 | Priprava načrta | 1d? | 2015-03-30 | 2015-03-31 |  | 0d |
| 83 | 11.1.2 | Priprava testnih primerov | 1d? | 2015-03-30 | 2015-03-31 |  | 0d |
| 84 | 11.1.3 | Testiranje | 1d? | 2015-03-30 | 2015-03-31 |  | 0d |
| 85 | 11.1.4 | Poročilo | 1d? | 2015-03-30 | 2015-03-31 |  | 0d |
| 86 | 11.1.5 | Priprava dokumentacije | 1d? | 2015-03-30 | 2015-03-31 |  | 0d |
| 87 | 11.1.6 | Ponovna iteracija implementacije | 1d? | 2015-03-30 | 2015-03-31 |  | 0d |
| 88 | 11.2 | **Inteligentni sistem** | 1d? | 2015-03-30 | 2015-03-31 |  | 0d |
| 89 | 11.2.1 | Priprava načrta | 1d? | 2015-03-30 | 2015-03-31 |  | 0d |
| 90 | 11.2.2 | Priprava testnih primerov | 1d? | 2015-03-30 | 2015-03-31 |  | 0d |
| 91 | 11.2.3 | Testiranje | 1d? | 2015-03-30 | 2015-03-31 |  | 0d |
| 92 | 11.2.4 | Poročilo | 1d? | 2015-03-30 | 2015-03-31 |  | 0d |
| 93 | 11.2.5 | Priprava dokumentacije | 1d? | 2015-03-30 | 2015-03-31 |  | 0d |
| 94 | 11.2.6 | Ponovna iteracija implementacije | 1d? | 2015-03-30 | 2015-03-31 |  | 0d |
| 95 | 11.3 | **Modifikacija brezpilotna zračna plovila** | 1d? | 2015-03-30 | 2015-03-31 |  | 0d |
| 96 | 11.3.1 | Priprava načrta | 1d? | 2015-03-30 | 2015-03-31 |  | 0d |
| 97 | 11.3.2 | Priprava testnih primerov | 1d? | 2015-03-30 | 2015-03-31 |  | 0d |
| 98 | 11.3.3 | Testiranje | 1d? | 2015-03-30 | 2015-03-31 |  | 0d |
| 99 | 11.3.4 | Poročilo | 1d? | 2015-03-30 | 2015-03-31 |  | 0d |
| 100 | 11.3.5 | Priprava dokumentacije | 1d? | 2015-03-30 | 2015-03-31 |  | 0d |
| 101 | 11.3.6 | Ponovna iteracija implementacije | 1d? | 2015-03-30 | 2015-03-31 |  | 0d |
| 102 | 11.4 | **Mobilna aplikacija** | 1d? | 2015-03-30 | 2015-03-31 |  | 0d |
| 103 | 11.4.1 | Priprava načrta | 1d? | 2015-03-30 | 2015-03-31 |  | 0d |
| 104 | 11.4.2 | Priprava testnih primerov | 1d? | 2015-03-30 | 2015-03-31 |  | 0d |
| 105 | 11.4.3 | Testiranje | 1d? | 2015-03-30 | 2015-03-31 |  | 0d |
| 106 | 11.4.4 | Poročilo | 1d? | 2015-03-30 | 2015-03-31 |  | 0d |
| 107 | 11.4.5 | Priprava dokumentacije | 1d? | 2015-03-30 | 2015-03-31 |  | 0d |
| 108 | 11.4.6 | Ponovna iteracija implementacije | 1d? | 2015-03-30 | 2015-03-31 |  | 0d |

| ID | WBS | Task | Type | Duration | Start | Finish | Predecessors | Total slack |
| --- | --- | --- | --- | --- | --- | --- | --- | --- |
| 109 | 12 | **Priprava navodil za uporabo** |  | 1d? | 2015-03-31 | 2015-04-01 | 37, 80 | 0d |
| 110 | 12.1 | Priprava navodil za uporabo spletne aplikacije |  | 1d? | 2015-03-31 | 2015-04-01 |  | 0d |
| 111 | 12.2 | Priprava navodil za uporabo mobilne aplikacije |  | 1d? | 2015-03-31 | 2015-04-01 |  | 0d |
| 112 | 12.3 | Priprava navodil za uporabo brezpilotnih zračnih plovil |  | 1d? | 2015-03-31 | 2015-04-01 |  | 0d |
| 113 | 12.4 | Priprava navodila za vzdrževaje brezpilotnih zračnih plovil |  | 1d? | 2015-03-31 | 2015-04-01 |  | 0d |
| 114 | 12.5 | Priprava navil za vzdrževanje intelegentnega sistema |  | 1d? | 2015-03-31 | 2015-04-01 |  | 0d |
| 115 | 13 | **Izobraževanje** |  | 1d? | 2015-04-01 | 2015-04-02 | 109 | 0d |
| 116 | 13.1 | Izboraževanje upravljanje intelegentnega sistema |  | 1d? | 2015-04-01 | 2015-04-02 |  | 0d |
| 117 | 13.2 | Izobraževanje uporabe in vzdrževanja brezpilotnih zračnih polovil |  | 1d? | 2015-04-01 | 2015-04-02 |  | 0d |
| 118 | 13.3 | Izobraževanje uporabe mobilne aplikacije |  | 1d? | 2015-04-01 | 2015-04-02 |  | 0d |
| 119 | 13.4 | Izobraževanje uporabe spletne aplikacije |  | 1d? | 2015-04-01 | 2015-04-02 |  | 0d |
| 120 | 14 | **Zaključek projekta** |  | 1d? | 2015-04-02 | 2015-04-03 | 115 | 0d |
| 121 | 14.1 | **Namestitev pri naročniku** |  | 1d? | 2015-04-02 | 2015-04-03 |  | 0d |
| 122 | 14.1.1 | Priprava načrta namestitve | manual | 1d? | 2015-04-02 | 2015-04-03 |  |  |
| 123 | 14.1.2 | Priprava in namestitev strežniških sistemov | manual | 1d? | 2015-04-02 | 2015-04-03 |  |  |
| 124 | 14.1.3 | Namestitev podatkovne baze | manual | 1d? | 2015-04-02 | 2015-04-03 |  |  |
| 125 | 14.1.4 | Vnos podatkov v podatkovno bazo | manual | 1d? | 2015-04-02 | 2015-04-03 |  |  |
| 126 | 14.1.5 | Namestitev intelegentega sistema | manual | 1d? | 2015-04-02 | 2015-04-03 |  |  |
| 127 | 14.1.6 | Preizkus delovanja intelegentnega sistema | manual | 1d? | 2015-04-02 | 2015-04-03 |  |  |
| 128 | 14.1.7 | Namestitev mobilne aplikacije | manual | 1d? | 2015-04-02 | 2015-04-03 |  |  |
| 129 | 14.1.8 | Namestitev spletne aplikacije | manual | 1d? | 2015-04-02 | 2015-04-03 |  |  |
| 130 | 14.1.9 | Preizkus delovanja spletne in mobilne aplikacije | manual | 1d? | 2015-04-02 | 2015-04-03 |  |  |
| 131 | 14.1.10 | Namestitev brezpilotnih zračnih plovil | manual | 1d? | 2015-04-02 | 2015-04-03 |  |  |
| 132 | 14.1.11 | Preizkus delovanja brezpilotnih zračnih plovil | manual | 1d? | 2015-04-02 | 2015-04-03 |  |  |
| 133 | 14.2 | Pogostitev izvajalcev |  | 1d? | 2015-04-02 | 2015-04-03 |  | 0.75d |
